# caXchange Project Plan

Schedule from MS Project, 2007-09-17 to 2008-02-28.
ScenPro, Inc.

## Calendars

- Standard: Mon-Fri 08:00-12:00, 13:00-17:00; Sat-Sun off.

## Resources

| Resource |
| --- |
| Michael |
| Team |
| Ekagra |
| ScenPro |

## Schedule

| ID | WBS | Task | Type | Duration | Start | Finish | Predecessors | Total slack | Free slack | Constraint |
| --- | --- | --- | --- | --- | --- | --- | --- | --- | --- | --- |
| 1 | 1 | **Project Management** |  | 119d | 2007-09-17 | 2008-02-28 |  | 0d |  |  |
| 2 | 1.1 | Project Management Plan (Task 1.1) |  | 3d | 2007-09-17 | 2007-09-19 |  | 6d | 0d |  |
| 3 | 1.2 | Communications Plan (Task 1.2) |  | 3d | 2007-09-26 | 2007-09-28 |  | 109d |  | finish no earlier than 2007-09-28 |
| 4 | 1.3 | **Monthly Reports** |  | 105d | 2007-10-05 | 2008-02-28 |  | 0d |  |  |
| 5 | 1.3.1 | Monthly Status Reports and Risk Matrix – month 1 (Task 1.3) |  | 1d | 2007-10-05 | 2007-10-05 |  | 104d |  | finish no earlier than 2007-10-05 |
| 6 | 1.3.2 | Monthly Status Reports and Risk Matrix – month 2 (Task 1.3) |  | 1d | 2007-11-05 | 2007-11-05 |  | 83d |  | finish no earlier than 2007-11-05 |
| 7 | 1.3.3 | Monthly Status Reports and Risk Matrix – month 3 (Task 1.3) |  | 1d | 2007-12-05 | 2007-12-05 |  | 61d |  | finish no earlier than 2007-12-05 |
| 8 | 1.3.4 | Monthly Status Reports and Risk Matrix – month 4 (Task 1.3) |  | 1d | 2008-01-07 | 2008-01-07 |  | 38d |  | finish no earlier than 2008-01-07 |
| 9 | 1.3.5 | Monthly Status Reports and Risk Matrix – month 5 (Task 1.3) |  | 1d | 2008-02-05 | 2008-02-05 |  | 17d |  | finish no earlier than 2008-02-05 |
| 10 | 1.3.6 | Monthly Status Reports and Risk Matrix – month 6 (Task 1.3) |  | 1d | 2008-02-28 | 2008-02-28 |  | 0d |  | finish no earlier than 2008-02-28 |
| 11 | 1.4 | **Risk Management Matrix** |  | 100d | 2007-09-21 | 2008-02-07 |  | 15d |  |  |
| 12 | 1.4.1 | Structured Risk management Matrix and tracking in caMP (Task 1.4) |  | 1d | 2007-09-21 | 2007-09-21 |  | 114d | 0d | finish no earlier than 2007-09-21 |
| 13 | 1.4.2 | Structured Risk management Matrix and tracking in caMP (Task 1.4) |  | 1d | 2007-10-04 | 2007-10-04 | 12SF+10d | 15d | 0d |  |
| 14 | 1.4.3 | Structured Risk management Matrix and tracking in caMP (Task 1.4) |  | 1d | 2007-10-17 | 2007-10-17 | 13SF+10d | 15d | 0d |  |
| 15 | 1.4.4 | Structured Risk management Matrix and tracking in caMP (Task 1.4) |  | 1d | 2007-10-30 | 2007-10-30 | 14SF+10d | 15d | 0d |  |
| 16 | 1.4.5 | Structured Risk management Matrix and tracking in caMP (Task 1.4) |  | 1d | 2007-11-12 | 2007-11-12 | 15SF+10d | 15d | 0d |  |
| 17 | 1.4.6 | Structured Risk management Matrix and tracking in caMP (Task 1.4) |  | 1d | 2007-11-23 | 2007-11-23 | 16SF+10d | 15d | 0d |  |
| 18 | 1.4.7 | Structured Risk management Matrix and tracking in caMP (Task 1.4) |  | 1d | 2007-12-06 | 2007-12-06 | 17SF+10d | 15d | 0d |  |
| 19 | 1.4.8 | Structured Risk management Matrix and tracking in caMP (Task 1.4) |  | 1d | 2007-12-19 | 2007-12-19 | 18SF+10d | 15d | 0d |  |
| 20 | 1.4.9 | Structured Risk management Matrix and tracking in caMP (Task 1.4) |  | 1d | 2008-01-01 | 2008-01-01 | 19SF+10d | 15d | 0d |  |
| 21 | 1.4.10 | Structured Risk management Matrix and tracking in caMP (Task 1.4) |  | 1d | 2008-01-14 | 2008-01-14 | 20SF+10d | 15d | 0d |  |
| 22 | 1.4.11 | Structured Risk management Matrix and tracking in caMP (Task 1.4) |  | 1d | 2008-01-25 | 2008-01-25 | 21SF+10d | 15d | 0d |  |
| 23 | 1.4.12 | Structured Risk management Matrix and tracking in caMP (Task 1.4) |  | 1d | 2008-02-07 | 2008-02-07 | 22SF+10d | 15d |  |  |
| 24 | 1.5 | Cross Cutting WS Project Kickoff Meeting |  | 1d | 2007-09-27 | 2007-09-27 |  | 110d | 0d | finish no earlier than 2007-09-27 |
| 25 | 1.6 | Meeting Notes from Cross-Cutting WS Project Kickoff (Task 1.5) |  | 2d | 2007-10-02 | 2007-10-03 | 24SF+5d | 106d |  |  |
| 26 | 1.7 | Lessons Learned Document (Task 1.6) |  | 5d | 2008-02-22 | 2008-02-28 |  | 0d |  | finish no earlier than 2008-02-28 |
| 27 | 1.8 | CTMSi Collaboration Report (Task 1.7) | milestone | 0d | 2007-11-16 | 2007-11-16 |  | 74d |  | finish no earlier than 2007-11-16 |
| 28 | 1.9 | CTMSi Collaboration Report (Task 1.7) | milestone | 0d | 2008-02-22 | 2008-02-22 |  | 4d |  | finish no earlier than 2008-02-22 |
| 29 | 1.10 | Refined Scope & Vision Document (Task 1.8) |  | 4d | 2007-10-02 | 2007-10-05 |  | 104d |  | finish no earlier than 2007-10-05 |

| ID | WBS | Task | Duration | Start | Finish | Predecessors | Total slack | Free slack | Constraint | Resources | Work |
| --- | --- | --- | --- | --- | --- | --- | --- | --- | --- | --- | --- |
| 30 | 1.11 | **All Hands Meetings** | 109d | 2007-09-27 | 2008-02-26 |  | 2d |  |  |  |  |
| 31 | 1.11.1 | All Hands Meeting | 1d | 2007-09-27 | 2007-09-27 |  | 109d | 0d | finish no earlier than 2007-09-27 |  |  |
| 32 | 1.11.2 | All Hands Meeting Notes (Task 1.9) | 1d | 2007-09-28 | 2007-09-28 | 31 | 109d |  |  |  |  |
| 33 | 1.11.3 | All Hands Meeting | 1d | 2007-10-29 | 2007-10-29 |  | 87d | 0d | finish no earlier than 2007-10-29 |  |  |
| 34 | 1.11.4 | All Hands Meeting Notes (Task 1.9) | 1d | 2007-10-30 | 2007-10-30 | 33 | 87d |  |  |  |  |
| 35 | 1.11.5 | All Hands Meeting | 1d | 2007-11-28 | 2007-11-28 |  | 65d | 0d | finish no earlier than 2007-11-28 |  |  |
| 36 | 1.11.6 | All Hands Meeting Notes (Task 1.9) | 1d | 2007-11-29 | 2007-11-29 | 35 | 65d |  |  |  |  |
| 37 | 1.11.7 | All Hands Meeting | 1d | 2007-12-17 | 2007-12-17 |  | 52d | 0d | finish no earlier than 2007-12-17 |  |  |
| 38 | 1.11.8 | All Hands Meeting Notes (Task 1.9) | 1d | 2007-12-18 | 2007-12-18 | 37 | 52d |  |  |  |  |
| 39 | 1.11.9 | All Hands Meeting | 1d | 2008-01-28 | 2008-01-28 |  | 22d | 0d | finish no earlier than 2008-01-28 |  |  |
| 40 | 1.11.10 | All Hands Meeting Notes (Task 1.9) | 1d | 2008-01-29 | 2008-01-29 | 39 | 22d |  |  |  |  |
| 41 | 1.11.11 | All Hands Meeting | 1d | 2008-02-25 | 2008-02-25 |  | 2d | 0d | finish no earlier than 2008-02-25 |  |  |
| 42 | 1.11.12 | All Hands Meeting Notes (Task 1.9) | 1d | 2008-02-26 | 2008-02-26 | 41 | 2d |  |  |  |  |
| 43 | 2 | **Elaboration Phase** | 17d | 2007-09-20 | 2007-10-12 |  | 1d | 0d |  |  | 144h |
| 44 | 2.1 | Use Case Specification and Realization Documents (Task 2.1) | 13d | 2007-09-26 | 2007-10-12 |  | 1d |  | finish no earlier than 2007-10-12 |  |  |
| 45 | 2.2 | Requirements and Specifications Document (Task 2.2) | 11d | 2007-09-26 | 2007-10-10 |  | 3d |  | finish no earlier than 2007-10-10 |  |  |
| 46 | 2.3 | Draft UML Static Class Diagram Model (Task 2.3.x) | 4d | 2007-09-20 | 2007-09-25 | 2 | 14d |  |  |  |  |
| 47 | 2.4 | Draft Design Document - Middle of phase (Task 2.4.x) | 6d | 2007-09-26 | 2007-10-03 |  | 2d | 0d | start no earlier than 2007-09-26 |  |  |
| 48 | 2.5 | Draft Design Document – End of Phase (Task 2.4.x) | 6d | 2007-10-04 | 2007-10-11 | 47 | 2d |  |  |  |  |
| 49 | 2.6 | **Prototype Code Bound to an Architectural Baseline (Task 2.5)** | 9d | 2007-09-20 | 2007-10-02 |  | 1d | 0d |  |  | 144h |
| 50 | 2.6.1 | Install and configure ESB on QA tier | 2d | 2007-09-20 | 2007-09-21 |  | 4d | 0d | start no earlier than 2007-09-20 | Ekagra | 16h |
| 51 | 2.6.2 | Develop implementation of CAM ITS for Enroll Subjects | 7d | 2007-09-24 | 2007-10-02 | 50 | 4d |  |  | Ekagra | 56h |
| 52 | 2.6.3 | Extend CTOM Model for multiple identifiers | 7d | 2007-09-20 | 2007-09-28 |  | 4d | 0d | start no earlier than 2007-09-20 | ScenPro | 56h |
| 53 | 2.6.4 | Fix CTOM Lab Viewer Performance | 2d | 2007-10-01 | 2007-10-02 | 52 | 4d |  |  | ScenPro | 16h |
| 54 | 2.7 | Test Plan Documented (Task 2.6) | 5d | 2007-09-20 | 2007-09-26 | 2 | 6d | 4d |  |  |  |
| 55 | 2.8 | Test Results Report (Task 2.7) | 8d | 2007-10-03 | 2007-10-12 | 49, 54 | 1d |  |  |  |  |
| 56 | 2.9 | Draft Technical Architecture Guide (Task 2.8) | 6d | 2007-10-04 | 2007-10-11 | 47 | 2d |  |  |  |  |
| 57 | 2.10 | Detailed Construction & Transition Phase Plan (Task 2.9) | 3d | 2007-10-03 | 2007-10-05 | 49 | 6d |  |  |  |  |
| 58 | 2.11 | Adopter Testing Environment (Task 2.10) | 2d | 2007-09-20 | 2007-09-21 | 2 | 16d |  |  |  |  |

| ID | WBS | Task | Duration | Start | Finish | Predecessors | Total slack | Free slack |
| --- | --- | --- | --- | --- | --- | --- | --- | --- |
| 59 | 3 | **Construction Phase 1** | 30d | 2007-10-15 | 2007-11-23 |  | 1d | 0d |
| 60 | 3.1 | Updated Use Case Documents (Task 3.1.x) | 4d | 2007-10-15 | 2007-10-18 | 43 | 1d | 0d |
| 61 | 3.2 | Updated Requirements and Specifications Document (SRS) (Task 3.2.x) | 4d | 2007-10-15 | 2007-10-18 | 43 | 27d |  |
| 62 | 3.3 | Updated UML Static Class Diagram Model (Task 3.3.x) | 3d | 2007-10-15 | 2007-10-17 | 43 | 28d |  |
| 63 | 3.4 | Updated Design Document (Task 3.4.x) | 3d | 2007-10-19 | 2007-10-23 | 60 | 1d | 0d |
| 64 | 3.5 | Prototype code (Task 3.5.x) | 18d | 2007-10-24 | 2007-11-16 | 63 | 1d | 0d |
| 65 | 3.6 | Test Plan Document & Data Set (Task 3.6.x) | 3d | 2007-10-15 | 2007-10-17 | 43 | 23d | 22d |
| 66 | 3.7 | Test Results Report (Task 3.7.x) | 5d | 2007-11-19 | 2007-11-23 | 64, 65 | 1d |  |
| 67 | 3.8 | Release Notes (Task 3.13.x) | 2d | 2007-11-19 | 2007-11-20 | 64 | 4d |  |
| 68 | 4 | **Construction Phase 2** | 30d | 2007-11-26 | 2008-01-04 |  | 1d | 0d |
| 69 | 4.1 | Updated Use Case Documents (Task 3.1.x) | 3d | 2007-11-26 | 2007-11-28 | 59 | 28d |  |
| 70 | 4.2 | Updated Requirements and Specifications Document (SRS) (Task 3.2.x) | 3d | 2007-11-26 | 2007-11-28 | 59 | 1d | 0d |
| 71 | 4.3 | Updated UML Static Class Diagram Model (Task 3.3.x) | 3d | 2007-11-26 | 2007-11-28 | 59 | 28d |  |
| 72 | 4.4 | Updated Design Document (Task 3.4.x) | 4d | 2007-11-29 | 2007-12-04 | 70 | 1d | 0d |
| 73 | 4.5 | Prototype code (Task 3.5.x) | 18d | 2007-12-05 | 2007-12-28 | 72 | 1d | 0d |
| 74 | 4.6 | Test Plan Document & Data Set (Task 3.6.x) | 3d | 2007-11-26 | 2007-11-28 | 59 | 23d | 22d |
| 75 | 4.7 | Test Results Report (Task 3.7.x) | 5d | 2007-12-31 | 2008-01-04 | 73, 74 | 1d |  |
| 76 | 4.8 | Updated Installation Guides (Task 3.9.x) | 5d | 2007-11-26 | 2007-11-30 | 59 | 26d |  |
| 77 | 4.9 | Draft Administration Guide (Task 3.12.1) | 4d | 2007-11-26 | 2007-11-29 | 59 | 27d |  |
| 78 | 4.10 | Release Notes (Task 3.13.x) | 2d | 2007-12-31 | 2008-01-01 | 73 | 4d |  |
| 79 | 4.11 | Draft End User Guide (Task 3.14.1) | 5d | 2007-11-26 | 2007-11-30 | 59 | 26d |  |
| 80 | 5 | **Construction Phase 3** | 30d | 2008-01-07 | 2008-02-15 |  | 1d | 0d |
| 81 | 5.1 | Updated Use Case Documents (Task 3.1.x) | 3d | 2008-01-07 | 2008-01-09 | 68 | 28d |  |
| 82 | 5.2 | Updated Requirements and Specifications Document (SRS) (Task 3.2.x) | 3d | 2008-01-07 | 2008-01-09 | 68 | 1d | 0d |
| 83 | 5.3 | Updated UML Static Class Diagram Model (Task 3.3.x) | 3d | 2008-01-07 | 2008-01-09 | 68 | 17d | 0d |
| 84 | 5.4 | Updated Design Document (Task 3.4.x) | 4d | 2008-01-10 | 2008-01-15 | 82 | 1d | 0d |
| 85 | 5.5 | Prototype code (Task 3.5.x) | 18d | 2008-01-16 | 2008-02-08 | 84 | 1d | 0d |
| 86 | 5.6 | Test Plan Document & Data Set (Task 3.6.x) | 3d | 2008-01-07 | 2008-01-09 | 68 | 23d | 22d |
| 87 | 5.7 | Test Results Report (Task 3.7.x) | 5d | 2008-02-11 | 2008-02-15 | 85, 86 | 1d |  |
| 88 | 5.8 | Final Technical/Architecture Guide (Task 3.8.x) | 4d | 2008-01-16 | 2008-01-21 | 84 | 20d |  |
| 89 | 5.9 | Updated Installation Guides (Task 3.9.x) | 3d | 2008-02-11 | 2008-02-13 | 85 | 3d |  |
| 90 | 5.10 | Complete Semantically annotated XMI file (Task 3.10.1) | 3d | 2008-01-10 | 2008-01-14 | 83 | 17d | 0d |
| 91 | 5.11 | Full CDE Use Report (Task 3.10.2) | 4d | 2008-01-15 | 2008-01-18 | 90 | 17d | 0d |
| 92 | 5.12 | Compatibility Review Submission Packaged (Task 3.11) | 4d | 2008-01-21 | 2008-01-24 | 91 | 17d |  |
| 93 | 5.13 | Final Administration Guide (Task 3.12.1) | 5d | 2008-02-11 | 2008-02-15 | 85 | 1d |  |
| 94 | 5.14 | Release Notes (Task 3.13.x) | 3d | 2008-02-11 | 2008-02-13 | 85 | 3d |  |
| 95 | 5.15 | Final End User Guide (Task 3.14.2) | 5d | 2008-02-11 | 2008-02-15 | 85 | 1d |  |
| 96 | 5.16 | Detailed Transition Phase Plan (Task 3.15) | 4d | 2008-01-07 | 2008-01-10 | 68 | 27d |  |

| ID | WBS | Task | Duration | Start | Finish | Predecessors | Total slack | Free slack |
| --- | --- | --- | --- | --- | --- | --- | --- | --- |
| 97 | 6 | **Transition Phase** | 8d | 2008-02-18 | 2008-02-27 |  | 1d |  |
| 98 | 6.1 | Finalized Deployment Plan (Task 4.1) | 3d | 2008-02-18 | 2008-02-20 | 80 | 2d | 0d |
| 99 | 6.2 | Fully Operational CCB and supporting processes documentation (Task 4.2) | 4d | 2008-02-21 | 2008-02-26 | 98 | 2d |  |
| 100 | 6.3 | Deployment Report for each Identified Organizations (Task 4.3) | 3d | 2008-02-21 | 2008-02-25 | 98 | 3d |  |
| 101 | 6.4 | Updated code releases (Task 4.4) | 8d | 2008-02-18 | 2008-02-27 | 80 | 1d |  |
